# GIS平台V2规划

Schedule from MS Project, 2012-08-21 to 2012-11-02.

## Calendars

- 标准: Mon-Fri 08:00-12:00, 13:00-17:00; Sat-Sun off.

## Resources

| Resource |
| --- |
| 李英本 |
| 张力 |
| 孙丽川 |
| TBD1 |
| 敖云峰 |
| 贾会宁 |
| 邹逵生 |
| 测试 |

## Schedule

| ID | WBS | Task | Duration | Start | Finish | Predecessors | Total slack | Free slack | Constraint | Resources | Work |
| --- | --- | --- | --- | --- | --- | --- | --- | --- | --- | --- | --- |
| 1 | 1 | **数据平台** | 43d | 2012-08-27 | 2012-10-24 |  | 7d |  |  | 李英本 | 672h |
| 2 | 1.1 | 数据库设计 | 3d | 2012-08-27 | 2012-08-29 |  | 35d | 0d | start no earlier than 2012-08-27 | 李英本 | 24h |
| 3 | 1.2 | **电子地图** | 8d | 2012-08-30 | 2012-09-10 |  | 30d |  |  | 李英本 | 128h |
| 4 | 1.2.1 | 基本页面制作 | 3d | 2012-08-30 | 2012-09-03 | 2 | 30d | 0d |  | 李英本 | 24h |
| 5 | 1.2.2 | 矢量图，影像图显示 | 2d | 2012-09-04 | 2012-09-05 | 4 | 30d | 0d |  | 李英本 | 16h |
| 6 | 1.2.3 | 缩放，平移，测距测面等基本功能 | 3d | 2012-09-06 | 2012-09-10 | 5 | 30d | 0d | finish no earlier than 2012-09-10 | 李英本 | 24h |
| 7 | 1.3 | 点录入(包括存储，检索） | 3d | 2012-09-11 | 2012-09-13 | 6 | 30d | 0d | finish no earlier than 2012-09-13 | 李英本 | 24h |
| 8 | 1.4 | 面录入 | 3d | 2012-09-14 | 2012-09-18 | 7 | 30d | 0d | finish no earlier than 2012-09-18 | 李英本 | 24h |
| 9 | 1.5 | 线录入 | 3d | 2012-09-19 | 2012-09-21 | 8 | 30d |  | finish no earlier than 2012-09-21 | 李英本 | 24h |
| 10 | 1.6 | 分类管理 | 3d | 2012-10-08 | 2012-10-10 |  | 7d | 0d | start no earlier than 2012-10-08 | 李英本 | 24h |
| 11 | 1.7 | 导出 | 3d | 2012-10-11 | 2012-10-15 | 10 | 7d | 0d | start no earlier than 2012-10-11 | 李英本 | 24h |
| 12 | 1.8 | 导入 | 3d | 2012-10-16 | 2012-10-18 | 11 | 7d | 0d | start no earlier than 2012-10-15 | 李英本 | 24h |
| 13 | 1.9 | 格式转换shp | 4d | 2012-10-19 | 2012-10-24 | 12 | 7d |  | finish no earlier than 2012-10-23 | 李英本 | 32h |
| 14 | 2 | **门户系统（重新开发）** | 35d? | 2012-08-27 | 2012-10-12 |  | 15d |  |  |  | 488h |
| 15 | 2.1 | 开发准备(定制程序框架) | 2d | 2012-08-27 | 2012-08-28 |  | 29d | 0d | start no earlier than 2012-08-27 | 孙丽川 | 16h |
| 16 | 2.2 | 首页 | 2d | 2012-08-29 | 2012-08-30 | 15 | 29d | 0d |  | 孙丽川 | 16h |
| 17 | 2.3 | 登录注册 | 2d | 2012-08-31 | 2012-09-03 | 16 | 29d | 0d |  | 孙丽川 | 16h |
| 18 | 2.4 | 平台资讯 | 3d | 2012-09-04 | 2012-09-06 | 17 | 29d | 0d |  | 孙丽川 | 24h |
| 19 | 2.5 | 案例介绍 | 3d | 2012-09-07 | 2012-09-11 | 18 | 29d | 0d |  | 孙丽川 | 24h |
| 20 | 2.6 | **地图服务** | 23d | 2012-09-12 | 2012-10-12 |  | 12d |  |  |  | 112h |
| 21 | 2.6.1 | 资源查询 | 3d | 2012-09-12 | 2012-09-14 | 19 | 29d | 0d |  | 孙丽川 | 24h |
| 22 | 2.6.2 | 地图发布向导 | 5d | 2012-10-08 | 2012-10-12 | 44 | 0d |  | start no earlier than 2012-10-08 | 敖云峰 | 40h |
| 23 | 2.6.3 | 资源申请 | 3d | 2012-09-17 | 2012-09-19 | 21 | 29d | 0d |  | 孙丽川 | 24h |
| 24 | 2.6.4 | 注册服务 | 3d | 2012-09-20 | 2012-09-24 | 23 | 29d | 0d |  | 孙丽川 | 24h |
| 25 | 2.7 | 平台留言 | 3d | 2012-09-25 | 2012-09-27 | 24 | 29d |  |  | 孙丽川 | 24h |
| 26 | 2.8 | 规范 | 3d | 2012-09-03 | 2012-09-05 |  | 37d | 0d | start no earlier than 2012-09-03 | 张力 | 24h |
| 27 | 2.9 | API服务 | 1d? | 2012-09-06 | 2012-09-06 | 26 | 37d | 0d |  | 张力 | 8h |
| 28 | 2.10 | 关于 | 1d? | 2012-09-07 | 2012-09-07 | 27 | 37d | 0d |  | 张力 | 8h |

| ID | WBS | Task | Duration | Start | Finish | Predecessors | Total slack | Free slack | Constraint | Resources | Work |
| --- | --- | --- | --- | --- | --- | --- | --- | --- | --- | --- | --- |
| 29 | 2.11 | **管理** | 21d | 2012-09-03 | 2012-10-01 |  | 24d |  |  |  | 216h |
| 30 | 2.11.1 | 权限分配 | 3d | 2012-09-10 | 2012-09-12 | 28 | 37d | 0d |  | 张力 | 24h |
| 31 | 2.11.2 | 专题应用维护 | 3d | 2012-09-13 | 2012-09-17 | 30 | 37d |  |  | 张力 | 24h |
| 32 | 2.11.3 | 信息通告维护 | 3d | 2012-09-03 | 2012-09-05 |  | 27d | 0d | start no earlier than 2012-09-03 | 贾会宁 | 24h |
| 33 | 2.11.4 | 位置服务维护 | 3d | 2012-09-06 | 2012-09-10 | 32 | 27d | 0d |  | 贾会宁 | 24h |
| 34 | 2.11.5 | 标准规范维护 | 3d | 2012-09-11 | 2012-09-13 | 33 | 27d | 0d |  | 贾会宁 | 24h |
| 35 | 2.11.6 | 用户反馈维护 | 3d | 2012-09-14 | 2012-09-18 | 34 | 27d | 0d |  | 贾会宁 | 24h |
| 36 | 2.11.7 | 地图纠错维护 | 3d | 2012-09-19 | 2012-09-21 | 35 | 27d | 0d |  | 贾会宁 | 24h |
| 37 | 2.11.8 | 用户留言维护 | 3d | 2012-09-24 | 2012-09-26 | 36 | 27d | 0d |  | 贾会宁 | 24h |
| 38 | 2.11.9 | 地图应用演示 | 3d | 2012-09-27 | 2012-10-01 | 37 | 27d |  |  | 贾会宁 | 24h |
| 39 | 3 | **资源管理系统** | 48d | 2012-08-29 | 2012-11-02 |  | 0d |  |  |  | 416h |
| 40 | 3.1 | 对谷歌百度切片的支持 | 3d | 2012-08-29 | 2012-08-31 |  | 13d | 0d | start no earlier than 2012-08-29 | 敖云峰 | 24h |
| 41 | 3.2 | 多元的资源访问支持，kml, wms,wfs | 5d | 2012-09-03 | 2012-09-07 | 40 | 13d | 0d |  | 敖云峰 | 40h |
| 42 | 3.3 | 非MapServer服务的支持 | 6d | 2012-09-03 | 2012-09-10 |  | 42d |  | start no earlier than 2012-09-03 | 邹逵生 | 48h |
| 43 | 3.4 | 增加属性表动态地图 | 5d | 2012-09-10 | 2012-09-14 | 41 | 13d | 6d |  | 敖云峰 | 40h |
| 44 | 3.5 | 增加地图关联表 | 5d | 2012-09-25 | 2012-10-01 | 43 | 7d | 4d | start no earlier than 2012-09-25 | 敖云峰 | 40h |
| 45 | 3.6 | **非arcgis格式地图资源包支持，如mapinfo** | 13d | 2012-10-15 | 2012-10-31 |  | 0d |  |  | 敖云峰 | 208h |
| 46 | 3.6.1 | 对mapinfo资源的导入 | 5d | 2012-10-15 | 2012-10-19 | 22 | 0d |  |  | 敖云峰 | 40h |
| 47 | 3.6.2 | 检索，门户展现，使用 | 5d | 2012-10-22 | 2012-10-26 | 46 | 0d |  |  | 敖云峰 | 40h |
| 48 | 3.6.3 | 后台其他相关修改 | 3d | 2012-10-29 | 2012-10-31 | 47 | 0d |  |  | 敖云峰 | 24h |
| 49 | 3.7 | 流程改进（门户，运维） | 2d | 2012-11-01 | 2012-11-02 | 48 | 0d |  |  | 敖云峰 | 16h |
| 50 | 4 | 文档(需求，数据库设计） | 1d? | 2012-08-21 | 2012-08-21 |  | 56d |  |  | 邹逵生 | 8h |
